# Szene1

Schedule from MS Project, 2006-02-27 to 2006-04-06, A marks actual dates.
Hewlett-Packard

## Calendars

- Standard: Mon-Fri 08:00-12:00, 13:00-17:00; Sat-Sun off.

## Schedule

| ID | WBS | Task | Duration | Start | Finish | Predecessors | Complete | Remaining | Total slack | Constraint |
| --- | --- | --- | --- | --- | --- | --- | --- | --- | --- | --- |
| 1 | 1 | **Library Preparation** | 7d? | 2006-02-27 A | 2006-03-07 A |  | 100% |  |  |  |
| 2 | 1.1 | MSVC | 1d? | 2006-02-27 A | 2006-02-27 A |  | 100% |  |  | start no earlier than 2006-02-27 |
| 3 | 1.2 | DJGPP | 2d | 2006-02-28 A | 2006-03-01 A |  | 100% |  |  |  |
| 4 | 1.3 | Fix Mouse prb | 2d | 2006-03-06 A | 2006-03-07 A |  | 100% |  |  | start no earlier than 2006-03-06 |
| 6 | 2 | **Fly** | 1d | 2006-03-02 A | 2006-03-02 A | 1 | 100% |  |  |  |
| 7 | 2.1 | Anpassung neue DJGPP Version | 4h | 2006-03-02 A | 2006-03-02 A |  | 100% |  |  | start no earlier than 2006-03-02 |
| 8 | 2.2 | Palettenproblem | 4h | 2006-03-02 A | 2006-03-02 A | 7 | 100% |  |  |  |
| 9 | 3 | **Matedit2** | 26d? | 2006-03-02 A | 2006-04-06 | 6 | 74% | 6.74d? | 0d |  |
| 10 | 3.1 | Depui Integration | 1d? | 2006-03-02 A | 2006-03-02 A |  | 100% |  |  |  |
| 11 | 3.2 | Basisparameter editierbar | 6.5d | 2006-03-03 A | 2006-03-29 | 10 | 92% | 0.5d | 6.5d |  |
| 12 | 3.3 | Szene laden | 2d | 2006-03-10 A | 2006-03-13 A |  | 100% |  |  |  |
| 13 | 3.4 | Shaderauswahl | 1d? | 2006-04-03 A | 2006-04-03 A | 11 | 100% |  |  | start no earlier than 2006-04-03 |
| 14 | 3.5 | Szene speichern | 3d | 2006-04-04 | 2006-04-06 | 13 |  |  | 0d |  |
| 16 | 4 | **Szene** | 19d? | 2006-02-28 A | 2006-03-24 | 1 | 80% | 3.8d? | 6.5d |  |
| 17 | 4.1 | Dir cleanup | 1d? | 2006-02-28 A | 2006-02-28 A |  | 100% |  |  |  |
| 18 | 4.2 | Depui Integration | 1d? | 2006-03-20 A | 2006-03-20 A | 17 | 100% |  |  | finish no earlier than 2006-03-20 |
| 19 | 4.3 | **Controller** | 2d? | 2006-03-22 A | 2006-03-23 A | 18 | 100% |  |  |  |
| 20 | 4.3.1 | Walk | 1d? | 2006-03-22 A | 2006-03-22 A |  | 100% |  |  |  |
| 21 | 4.3.2 | Fly | 1d? | 2006-03-23 A | 2006-03-23 A | 20 | 100% |  |  |  |
| 22 | 4.4 | File select | 1d? | 2006-03-24 | 2006-03-24 | 19 |  |  | 6.5d |  |

Notes:
- 2: Kompilierung aller Bibliotheken mit MSVC 6.0: / ·Depui 2.0 / ·Expat-1.95.2 / ·GRX2.4.3 / ·Plush1.2.0
- 3: Kompilierung aller Bibliotheken mit DJGPP2.03: / ·Depui 2.0 / ·Expat-1.95.2 / ·GRX2.4.3 / ·Plush1.2.0
- 11: ·Ambient/Specular/Diffuse / ·Shininess/Transparent / ·Texturen aus Datei laden / ·TexScaling / ·Texture reset
- 13: ·Flat / ·Gouraud
